# 电解液充电能力评估（一 阶段）

Schedule from a web Gantt chart, 2025-12-09 to 2026-02-27.
Saturdays and Sundays are off

## Schedule

| ID | WBS | Task | Duration | Start | Finish | Predecessors | Complete | inPeople | Status |
| --- | --- | --- | --- | --- | --- | --- | --- | --- | --- |
| 2 | 1 | **平台工作（本征参数测量）** | 36d | 2025-12-09 | 2026-01-27 |  | 9% |  |  |
| 3 | 1.1 | **电解液配置（高通量）** | 17d | 2025-12-09 | 2025-12-31 |  | 9% | 邢玉泽 |  |
| 4 | 1.1.1 | 批次1 | 5d | 2025-12-09 | 2025-12-15 |  | 30% |  |  |
| 5 | 1.1.2 | 批次2 | 7d | 2025-12-16 | 2025-12-24 | 4 |  |  | waiting |
| 6 | 1.1.3 | 批次3 | 5d | 2025-12-25 | 2025-12-31 | 5 |  |  | waiting |
| 7 | 2 | **模型工作（参数模型、电化学仿真）** | 59d | 2025-12-09 | 2026-02-27 |  |  |  |  |
| 8 | 2.1 | **仿真模型对标优化** | 24d | 2025-12-09 | 2026-01-09 |  |  | 夏习文; 刘荣康 |  |
| 9 | 2.1.1 | 电性能对标数据收集 | 14d | 2025-12-09 | 2025-12-26 |  |  |  |  |
| 10 | 2.1.2 | 电迁移、扩散电流拆分 | 14d | 2025-12-12 | 2025-12-31 |  |  |  |  |
| 11 | 2.1.3 | 基于本征参数的模型调优 | 17d | 2025-12-18 | 2026-01-09 |  |  |  | waiting |
| 12 | 2.2 | **参数模型建设（基于 5 元配方）** | 29d | 2026-01-05 | 2026-02-12 |  |  | 孙宗杰 | waiting |
| 13 | 2.2.1 | 电导率模型 | 13d | 2026-01-05 | 2026-01-21 |  |  |  | waiting |
| 14 | 2.2.2 | 扩散系数模型 | 14d | 2026-01-21 | 2026-02-09 |  |  |  | waiting |
| 15 | 2.2.3 | 迁移数模型（视情况） | 8d | 2026-02-03 | 2026-02-12 |  |  |  | waiting |
| 16 | 2.3 | 基于参数模型的性能预测 | 11d | 2026-02-13 | 2026-02-27 | 12, 8 |  | 刘荣康; 孙宗杰 | waiting |

Notes:
- 4: EL1~EL15，涵盖MID设计体系（部分能够得到实际充电能力）
- 9: MID提供ALP数据，XM完成相关能力建设及对标
